# AirTicetingSyste

Schedule from MS Project, 2023-10-18 to 2024-01-16, costs in $, A marks actual dates.

## Calendars

- Standard: Mon-Fri 08:00-12:00, 13:00-17:00; Sat-Sun off.

## Resources

| Resource | Rate |
| --- | --- |
| Prayag | 10 |
| Sudip | 10 |
| Suman | 10 |
| Bilish |  |
| Binaya |  |
| Sanjeev |  |

## Schedule

| ID | WBS | Task | Type | Duration | Start | Finish | Predecessors | Complete | Remaining | Baseline start | Baseline finish | Baseline duration | Total slack | Free slack | Constraint | Resources | Work | Actual work | Cost | Baseline cost | Actual cost |
| --- | --- | --- | --- | --- | --- | --- | --- | --- | --- | --- | --- | --- | --- | --- | --- | --- | --- | --- | --- | --- | --- |
| 1 | 1 | Project Start | milestone | 0d | 2023-10-18 | 2023-10-18 |  |  |  | 2023-10-18 | 2023-10-18 | 0d | 65d |  | start no earlier than 2023-10-18 |  |  |  |  |  |  |
| 2 | 2 | **Planning** |  | 8d | 2023-10-18 A | 2023-10-27 A |  | 100% |  | 2023-10-18 | 2023-10-27 | 8d |  |  |  |  | 112h | 112h | 1,120 | 1,120 | 1,120 |
| 3 | 2.1 | Project Selection |  | 3d | 2023-10-18 A | 2023-10-20 A |  | 100% |  | 2023-10-18 | 2023-10-20 | 3d |  |  |  | Suman; Sudip; Prayag | 72h | 72h | 720 | 720 | 720 |
| 4 | 2.2 | Literature Review |  | 5d | 2023-10-23 A | 2023-10-27 A | 3 | 100% |  | 2023-10-23 | 2023-10-27 | 5d |  |  |  | Prayag | 40h | 40h | 400 | 400 | 400 |
| 5 | 3 | **Analysis** |  | 9d | 2023-10-30 A | 2023-11-09 A | 2 | 100% |  | 2023-10-30 | 2023-11-09 | 9d |  |  |  |  | 104h | 104h | 1,040 | 1,040 | 1,040 |
| 6 | 3.1 | Requirements Gathering |  | 2d | 2023-10-30 A | 2023-10-31 A | 4 | 100% |  | 2023-10-30 | 2023-10-31 | 2d |  |  |  | Sudip | 16h | 16h | 160 | 160 | 160 |
| 7 | 3.2 | Feasibility Analysis |  | 4d | 2023-11-01 A | 2023-11-06 A | 6 | 100% |  | 2023-11-01 | 2023-11-06 | 4d |  |  |  | Suman; Prayag | 64h | 64h | 640 | 640 | 640 |
| 8 | 3.3 | Algorithm Selection |  | 3d | 2023-11-07 A | 2023-11-09 A | 7 | 100% |  | 2023-11-07 | 2023-11-09 | 3d |  |  |  | Prayag | 24h | 24h | 240 | 240 | 240 |
| 9 | 4 | **Design** |  | 7d | 2023-11-10 A | 2023-11-20 A | 5 | 100% |  | 2023-11-10 | 2023-11-20 | 7d |  |  |  |  | 144h | 144h | 880 | 880 | 880 |
| 10 | 4.1 | Database Design |  | 3d | 2023-11-10 A | 2023-11-14 A | 8 | 100% |  | 2023-11-10 | 2023-11-14 | 3d |  |  |  | Sudip; Binaya | 48h | 48h | 240 | 240 | 240 |
| 11 | 4.2 | Prototype Building |  | 4d | 2023-11-15 A | 2023-11-20 A | 10 | 100% |  | 2023-11-15 | 2023-11-20 | 4d |  |  |  | Suman; Sudip; Sanjeev | 96h | 96h | 640 | 640 | 640 |
| 12 | 5 | **Implementation** |  | 32d | 2023-11-21 A | 2024-01-03 | 9 | 50% | 15.91d | 2023-11-21 | 2024-01-03 | 32d | 2d | 0d |  |  | 704h | 310.4h | 3,920 | 3,920 | 1,616 |
| 13 | 5.1 | Front End Development |  | 10d | 2023-11-21 A | 2023-12-04 A | 11 | 100% |  | 2023-11-21 | 2023-12-04 | 10d |  |  |  | Sudip; Binaya | 160h | 160h | 800 | 800 | 800 |
| 14 | 5.2 | EDA |  | 2d | 2023-12-05 A | 2023-12-06 A | 13 | 100% |  | 2023-12-05 | 2023-12-06 | 2d |  |  |  | Prayag; Sanjeev | 32h | 32h | 160 | 160 | 160 |
| 15 | 5.3 | Feature Engineering |  | 3d | 2023-12-07 A | 2023-12-11 A | 14 | 100% |  | 2023-12-07 | 2023-12-11 | 3d |  |  |  | Prayag; Sanjeev | 48h | 48h | 240 | 240 | 240 |
| 16 | 5.4 | Backend Development |  | 12d | 2023-12-05 A | 2023-12-20 | 13 | 17% | 10d | 2023-12-05 | 2023-12-20 | 12d | 1.6d | 0d |  | Suman; Bilish | 192h | 32h | 960 | 960 | 160 |
| 17 | 5.5 | Database Setup |  | 8d | 2023-12-21 A | 2024-01-01 | 15, 16 | 20% | 6.4d | 2023-12-21 | 2024-01-01 | 8d | 2d | 0d |  | Suman; Prayag; Bilish | 192h | 38.4h | 1,280 | 1,280 | 256 |
| 18 | 5.6 | Model Integration |  | 2d | 2024-01-02 | 2024-01-03 | 16, 17 |  |  | 2024-01-02 | 2024-01-03 | 2d | 2d |  |  | Suman; Sudip; Prayag; Bilish; Binaya | 80h |  | 480 | 480 |  |
| 19 | 6 | **Testing** |  | 9d | 2024-01-04 | 2024-01-16 | 12 |  |  | 2024-01-04 | 2024-01-16 | 9d | 2d | 0d |  |  | 128h |  | 880 | 880 |  |
| 20 | 6.1 | Unit Testing |  | 5d | 2024-01-04 | 2024-01-10 |  |  |  | 2024-01-04 | 2024-01-10 | 5d | 2d | 0d |  | Sudip; Sanjeev | 80h |  | 400 | 400 |  |
| 21 | 6.2 | Integration Testing |  | 2d | 2024-01-11 | 2024-01-12 | 20 |  |  | 2024-01-11 | 2024-01-12 | 2d | 2d | 0d |  | Suman | 16h |  | 160 | 160 |  |
| 22 | 6.3 | System Testing |  | 2d | 2024-01-15 | 2024-01-16 | 21 |  |  | 2024-01-15 | 2024-01-16 | 2d | 2d |  |  | Sudip; Prayag | 32h |  | 320 | 320 |  |
| 23 | 7 | Project End | milestone | 0d | 2024-01-16 | 2024-01-16 | 19 |  |  | 2024-01-16 | 2024-01-16 | 0d | 2d |  | start no earlier than 2024-01-16 |  |  |  |  |  |  |
